# 成都市市政工程

Schedule from MS Project, 2023-04-07 to 2023-08-19.
工期默认是按工时计算，可以在“文件-选项-日程”中设置。
工期默认是按工时计算，可以在文件-选项-日程中设置。

## Calendars

- 项目1日历: Mon-Fri 08:00-12:00, 13:00-17:00; Sat 09:00-18:00; Sun off. Exceptions (off unless hours are given): 2023-04-29 to 2023-05-03 (劳动节放假（休）), 2023-05-07 09:00-18:00 (劳动节补班（班）).

## Schedule

| ID | WBS | Task | Duration | Start | Finish | Predecessors | Total slack | Constraint |
| --- | --- | --- | --- | --- | --- | --- | --- | --- |
| 1 | 1 | **管廊工程** | 57d | 2023-04-07 | 2023-06-14 |  | 0d |  |
| 2 | 1.1 | 打围护桩 | 15d | 2023-04-07 | 2023-04-24 |  | 0d | start no earlier than 2023-04-07 |
| 3 | 1.2 | 土方开挖 | 10d | 2023-04-12 | 2023-04-24 | 2FS-10d | 0d |  |
| 4 | 1.3 | 基坑冠梁 | 10d | 2023-04-18 | 2023-05-04 | 3FS-5d | 0d |  |
| 5 | 1.4 | 基坑腰梁 | 8d | 2023-04-25 | 2023-05-08 | 4FS-4d | 0d |  |
| 6 | 1.5 | 基地处理 | 5d | 2023-04-28 | 2023-05-08 | 5SS+3d | 0d |  |
| 7 | 1.6 | 垫层及防水层 | 5d | 2023-05-05 | 2023-05-10 | 6FS-3d | 0d |  |
| 8 | 1.7 | 底板绑筋及混凝土 | 20d | 2023-05-08 | 2023-05-30 | 7SS+3d | 0d |  |
| 9 | 1.8 | 侧墙绑筋及混凝土 | 30d | 2023-05-11 | 2023-06-14 | 8SS+3d | 0d |  |
| 10 | 1.9 | 顶板绑筋及混凝土 | 20d | 2023-05-23 | 2023-06-14 | 9SS+10d | 0d |  |
| 11 | 1.10 | 外墙顶板防水及保护层 | 10d | 2023-05-29 | 2023-06-08 | 10SS+5d | 0d |  |
| 12 | 1.11 | 肥槽及分层回填 | 10d | 2023-06-01 | 2023-06-12 | 11FS-7d | 0d |  |
| 13 | 2 | **污水工程** | 17d | 2023-06-12 | 2023-07-01 |  | 0d |  |
| 14 | 2.1 | 沟槽开挖 | 12d | 2023-06-12 | 2023-06-26 | 12 | 0d |  |
| 15 | 2.2 | 检查井 | 15d | 2023-06-14 | 2023-07-01 | 14SS+2d | 0d |  |
| 16 | 2.3 | 下管 | 10d | 2023-06-14 | 2023-06-26 | 15SS | 0d |  |
| 17 | 2.4 | 回填 | 11d | 2023-06-19 | 2023-07-01 | 16FS-6d | 0d |  |
| 18 | 3 | **道路工程** | 37d | 2023-07-01 | 2023-08-12 |  | 0d |  |
| 19 | 3.1 | 路床处理 | 5d | 2023-07-01 | 2023-07-07 | 17 | 0d |  |
| 20 | 3.2 | 水稳 | 21d | 2023-07-15 | 2023-08-08 | 19FS+7d | 0d |  |
| 21 | 3.3 | 路沿石 | 5d | 2023-08-04 | 2023-08-10 | 20FS-3d | 0d |  |
| 22 | 3.4 | 面层 | 2d | 2023-08-10 | 2023-08-12 | 21 | 0d |  |
| 23 | 4 | **绿化工程** | 6d | 2023-08-12 | 2023-08-19 |  | 0d |  |
| 24 | 4.1 | 乔木种植 | 5d | 2023-08-12 | 2023-08-18 | 22 | 0d |  |
| 25 | 4.2 | 灌木种植 | 3d | 2023-08-14 | 2023-08-17 | 24SS+1d | 2d |  |
| 26 | 4.3 | 花卉种植 | 5d | 2023-08-14 | 2023-08-19 | 24SS+1d | 0d |  |
